# FOPLP 面板式封装

Schedule from a web Gantt chart, 2025-06-13 to 2026-02-10.
Every day is a working day

## Schedule

| ID | WBS | Task | Duration | Start | Finish | Predecessors | Complete | Status |
| --- | --- | --- | --- | --- | --- | --- | --- | --- |
| 2 | 1 | FOPLP 8X9 Design | 6d | 2025-06-13 | 2025-06-18 |  | 100% | done |
| 3 | 2 | 2-FM+2M RDL wafer | 9d | 2025-07-18 | 2025-07-26 |  | 100% | done |
| 4 | 3 | 1st Eng sample | 45d | 2025-08-04 | 2025-09-17 |  | 100% | done |
| 5 | 4 | **RE 摸底** | 70d | 2025-09-18 | 2025-11-26 |  | 33% |  |
| 6 | 4.1 | Pre-con/MSL | 33d | 2025-09-18 | 2025-10-20 | 4 | 100% |  |
| 7 | 4.2 | 1st TC200 | 9d | 2025-10-20 | 2025-10-28 |  |  |  |
| 8 | 4.3 | 1st TC500 | 21d | 2025-10-21 | 2025-11-10 |  |  |  |
| 9 | 4.4 | 1st TC1000 | 37d | 2025-10-21 | 2025-11-26 |  |  |  |
| 10 | 5 | 3-FM+2M RDL wafer | 32d | 2025-10-10 | 2025-11-10 |  |  |  |
| 11 | 6 | FOPLP 8X8 design | 12d | 2025-10-13 | 2025-10-24 |  | 100% | done |
| 12 | 7 | FOPLP 8X8 1st ES | 36d | 2025-11-10 | 2025-12-15 |  |  |  |
| 13 | 8 | **Pre-qual 1 lot** | 32d | 2025-12-16 | 2026-01-16 | 12 |  | waiting |
| 14 | 8.1 | TC200 | 8d | 2025-12-16 | 2025-12-23 |  |  | waiting |
| 15 | 8.2 | TC500 | 32d | 2025-12-16 | 2026-01-16 |  |  | waiting |
| 16 | 9 | **Assembly (3-FM+2M BSL)** | 45d | 2025-11-15 | 2025-12-29 |  |  |  |
| 17 | 9.1 | RDL+CP | 31d | 2025-11-15 | 2025-12-15 |  |  |  |
| 18 | 9.2 | FOPLP 8X8 封装(qual lot)） | 45d | 2025-11-15 | 2025-12-29 |  |  |  |
| 19 | 10 | **Formal qual 3 Lot** | 42d | 2025-12-30 | 2026-02-09 | 18 |  | waiting |
| 20 | 10.1 | TC200 | 8d | 2025-12-30 | 2026-01-06 |  |  | waiting |
| 21 | 10.2 | TC500 | 32d | 2025-12-30 | 2026-01-30 |  |  | waiting |
| 22 | 10.3 | TC1000 | 42d | 2025-12-30 | 2026-02-09 |  |  | waiting |
| 23 | 11 | FOPLP 8X8 Release | 1d | 2026-02-10 | 2026-02-10 | 22 |  | waiting |

Notes:
- 11: FOPLP8X8 方案 (背面漏铜和漏Si) 待台达确认
